# UKMARSBOT

Schedule from MS Project, 2019-07-08 to 2020-04-21, A marks actual dates.

## Calendars

- Standard: Mon-Fri 08:00-12:00, 13:00-17:00; Sat-Sun off.

## Resources

| Resource |
| --- |
| David Hannaford |
| Peter Harrison |
| Ian Butterworth |
| UKMARS Members |

## Schedule

| ID | WBS | Task | Type | Duration | Start | Finish | Predecessors | Complete | Remaining | Total slack | Constraint | Resources | Work | Actual work |
| --- | --- | --- | --- | --- | --- | --- | --- | --- | --- | --- | --- | --- | --- | --- |
| 1 | 1 | **First Generation UKMARSBOT** |  | 147d | 2019-07-08 A | 2020-01-28 |  | 7% | 137.36d | 60d |  |  | 880h | 100h |
| 2 | 1.1 | **Initiation** |  | 6d | 2019-07-08 A | 2019-07-15 |  | 83% | 1d | 0d |  |  | 120h | 100h |
| 3 | 1.1.1 | Define and Publish Requirements |  | 3d | 2019-07-08 A | 2019-07-10 A |  | 100% |  |  |  | David Hannaford | 24h | 24h |
| 4 | 1.1.2 | Define and Publish "Straw Man" Bill of Materials |  | 3d | 2019-07-08 A | 2019-07-10 |  | 50% | 1.5d | 2d |  | David Hannaford | 24h | 12h |
| 5 | 1.1.3 | Define and Publish Contributor Guide |  | 5d | 2019-07-08 A | 2019-07-12 A |  | 100% |  |  |  | Ian Butterworth | 40h | 40h |
| 6 | 1.1.4 | Update Summary ReadMe on GitHub |  | 3d | 2019-07-08 A | 2019-07-10 A |  | 100% |  |  |  | Ian Butterworth | 24h | 24h |
| 7 | 1.1.5 | Communicate and invite collaboration |  | 1d | 2019-07-15 | 2019-07-15 | 3, 4, 5, 6 |  |  | 0d |  | Ian Butterworth | 8h |  |
| 8 | 1.2 | **Design** |  | 20d | 2019-07-15 A | 2019-08-09 |  | 5% | 18.97d | 0d |  |  | 280h |  |
| 9 | 1.2.1 | Requirements & BOM feedback and suggestions |  | 4d | 2019-07-16 | 2019-07-19 | 7 |  |  | 0d |  | UKMARS Members | 32h |  |
| 10 | 1.2.2 | Finalise Requirements and BOM |  | 1d | 2019-07-22 | 2019-07-22 | 9 |  |  | 0d |  | David Hannaford | 8h |  |
| 11 | 1.2.3 | Agree PCB Design Software |  | 2d | 2019-07-15 A | 2019-07-16 A |  | 100% |  |  | start no earlier than 2019-07-15 |  |  |  |
| 12 | 1.2.4 | Select Board Fabricator |  | 2d | 2019-07-15 | 2019-07-16 |  |  |  | 18d | start no earlier than 2019-07-15 |  |  |  |
| 13 | 1.2.5 | Design Mother Board |  | 10d | 2019-07-18 | 2019-07-31 | 11, 10FS-3d |  |  | 0d |  | Peter Harrison | 80h |  |
| 14 | 1.2.6 | Design Basic Line Sensor Board |  | 5d | 2019-07-18 | 2019-07-24 | 11, 10FS-3d |  |  | 5d |  | Ian Butterworth | 40h |  |
| 15 | 1.2.7 | Design Basic Maze Sensor Board |  | 5d | 2019-07-18 | 2019-07-24 | 11, 10FS-3d |  |  | 5d |  | Peter Harrison | 40h |  |
| 16 | 1.2.8 | Publish Board Designs for Consultation |  | 1d | 2019-08-01 | 2019-08-01 | 13, 14, 15 |  |  | 0d |  | Peter Harrison | 8h |  |
| 17 | 1.2.9 | Board Design feedback and suggestions |  | 4d | 2019-08-02 | 2019-08-07 | 16 |  |  | 0d |  | UKMARS Members | 32h |  |
| 18 | 1.2.10 | Finalise Board Design |  | 5d | 2019-08-05 | 2019-08-09 | 17FS-3d |  |  | 0d |  | Peter Harrison | 40h |  |
| 19 | 1.3 | **Fabrication** |  | 22d | 2019-08-12 | 2019-09-10 |  |  |  | 0d |  |  |  |  |
| 20 | 1.3.1 | Send Boards for Fabrication |  | 1d | 2019-08-12 | 2019-08-12 | 18, 12 |  |  | 0d |  |  |  |  |
| 21 | 1.3.2 | Fabrication |  | 20d | 2019-08-13 | 2019-09-09 | 20 |  |  | 0d |  |  |  |  |
| 22 | 1.3.3 | First Generation Boards available | milestone | 1d | 2019-09-10 | 2019-09-10 | 21 |  |  | 0d |  |  |  |  |
| 23 | 1.4 | **Trials** |  | 100d | 2019-09-11 | 2020-01-28 |  |  |  | 0d |  |  | 480h |  |
| 24 | 1.4.1 | Construction and testing @ KES |  | 60d | 2019-09-11 | 2019-12-03 | 22 |  |  | 0d |  | David Hannaford | 480h |  |
| 25 | 1.4.2 | User Guide |  | 20d | 2019-10-09 | 2019-11-05 | 24SS+20d |  |  | 120d |  |  |  |  |
| 26 | 1.4.3 | Software Development |  | 60d | 2019-11-06 | 2020-01-28 | 24SS+40d |  |  | 60d |  |  |  |  |
| 27 | 1.4.4 | Assessment Report |  | 5d | 2019-10-16 | 2019-10-22 | 24SS+25d |  |  | 0d |  |  |  |  |

| ID | WBS | Task | Duration | Start | Finish | Predecessors | Total slack |
| --- | --- | --- | --- | --- | --- | --- | --- |
| 28 | 2 | **Second Generation UKMARSBOT** | 130d | 2019-10-23 | 2020-04-21 |  | 0d |
| 29 | 2.1 | Second Generation Development | 130d | 2019-10-23 | 2020-04-21 | 27 | 0d |
